# FennecBotPlan

Schedule from MS Project, 2021-04-28 to 2021-07-21, A marks actual dates.

## Calendars

- Standard: Mon-Sun 08:00-12:00, 13:00-17:00. Exceptions (off unless hours are given): 2021-04-28 to 2021-07-21 08:00-12:00, 13:00-17:00.

## Resources

| Resource |
| --- |
| Hien Anh Nguyen Manh |
| Son Khue Nguyen |
| Umut Uzunoglu |
| Lukas Evers |

## Schedule

| ID | WBS | Task | Duration | Start | Finish | Predecessors | Complete | Remaining | Total slack | Free slack | Constraint | Resources | Work | Actual work |
| --- | --- | --- | --- | --- | --- | --- | --- | --- | --- | --- | --- | --- | --- | --- |
| 1 | 1 | **Fennec Bot** | 85d | 2021-04-28 A | 2021-07-21 |  | 5% | 81.17d | 0d |  |  |  | 492h | 96h |
| 2 | 1.1 | Lastenheft liegt vor | 1d | 2021-04-28 A | 2021-04-28 A |  | 100% |  |  |  | must start on 2021-04-28 |  |  |  |
| 3 | 1.2 | **Konzeptphase** | 21d | 2021-04-29 A | 2021-05-19 A | 2 | 100% |  |  |  |  |  | 96h | 96h |
| 4 | 1.2.1 | **Pflichtenheft** | 21d | 2021-04-29 A | 2021-05-19 A |  | 100% |  |  |  |  |  | 96h | 96h |
| 5 | 1.2.1.1 | Use Cases definieren | 1.5d | 2021-04-29 A | 2021-04-30 A |  | 100% |  |  |  | finish no earlier than 2021-05-12 | Son Khue Nguyen | 12h | 12h |
| 6 | 1.2.1.2 | Workflow erstellen | 2d | 2021-05-13 A | 2021-05-14 A |  | 100% |  |  |  |  | Hien Anh Nguyen Manh | 16h | 16h |
| 7 | 1.2.1.3 | Funktionalitäten | 8d | 2021-05-12 A | 2021-05-19 A |  | 100% |  |  |  | finish no earlier than 2021-05-19 | Lukas Evers [50%]; Son Khue Nguyen [50%]; Umut Uzunoglu | 68h | 68h |
| 8 | 1.3 | **Sprint 1** | 21d | 2021-05-20 | 2021-06-09 | 3 |  |  | 21d | 0d |  |  | 396h |  |
| 9 | 1.3.1 | **Jetson Nano** | 12d | 2021-05-20 | 2021-05-31 | 3 |  |  | 21d |  |  |  | 176h |  |
| 10 | 1.3.1.1 | Linux Einarbeitung | 2d | 2021-05-20 | 2021-05-21 |  |  |  | 21d | 0d |  | Hien Anh Nguyen Manh; Son Khue Nguyen; Umut Uzunoglu | 44h |  |
| 11 | 1.3.1.2 | Externen Controller einbinden | 10d | 2021-05-22 | 2021-05-31 | 10 |  |  | 21d | 0d |  | Lukas Evers [25%] | 20h |  |
| 12 | 1.3.1.3 | Intel Real Sense integrieren | 4d | 2021-05-22 | 2021-05-25 | 10 |  |  | 36d |  |  | Umut Uzunoglu [50%] | 16h |  |
| 13 | 1.3.1.4 | LiDAR Einbindung | 8d | 2021-05-22 | 2021-05-29 | 10 |  |  | 32d |  |  | Lukas Evers [25%] | 16h |  |
| 14 | 1.3.1.5 | ROS Melodic Einarbeitung | 4d | 2021-05-22 | 2021-05-25 | 10 |  |  | 32d | 0d |  | Hien Anh Nguyen Manh [50%]; Lukas Evers [50%]; Son Khue Nguyen [50%]; Umut Uzunoglu [50%] | 64h |  |
| 15 | 1.3.1.6 | ROS Enviroment einbinden | 4d | 2021-05-26 | 2021-05-29 | 14 |  |  | 32d |  |  | Umut Uzunoglu [50%] | 16h |  |
| 16 | 1.3.2 | **3D-Modell** | 21d | 2021-05-20 | 2021-06-09 | 3 |  |  | 21d |  |  |  | 128h |  |
| 17 | 1.3.2.1 | Abmessung vom Racer Bot | 2d | 2021-05-20 | 2021-05-21 |  |  |  | 21d | 0d |  | Lukas Evers [25%] | 4h |  |
| 18 | 1.3.2.2 | Erstes 3D Modell erstellen und (drucken) | 19d | 2021-05-22 | 2021-06-09 | 17 |  |  | 21d |  | finish no earlier than 2021-06-09 | Hien Anh Nguyen Manh [50%]; Son Khue Nguyen [50%] | 124h |  |
| 19 | 1.3.3 | **Intelligenz** | 14d | 2021-05-27 | 2021-06-09 |  |  |  | 21d |  |  |  | 56h |  |
| 20 | 1.3.3.1 | Autonome Navigation & Umbgebungserkundung | 14d | 2021-05-27 | 2021-06-09 |  |  |  | 21d |  | start no earlier than 2021-05-27 | Lukas Evers [50%] | 56h |  |
| 21 | 1.3.4 | **Jet Racer** | 9d | 2021-06-01 | 2021-06-09 |  |  |  | 21d |  |  |  | 36h |  |
| 22 | 1.3.4.1 | Fahren mit Controller (NVIDIA) | 9d | 2021-06-01 | 2021-06-09 | 11 |  |  | 21d |  |  | Lukas Evers [50%] | 36h |  |
| 23 | 1.4 | **Sprint 2** | 21d | 2021-06-10 | 2021-06-30 | 8 |  |  | 21d | 0d |  |  |  |  |
| 24 | 1.4.1 | **Intelligenz** | 21d | 2021-06-10 | 2021-06-30 |  |  |  | 21d |  |  |  |  |  |
| 25 | 1.4.1.1 | Linienerkennung | 11d | 2021-06-10 | 2021-06-20 |  |  |  | 21d | 0d |  |  |  |  |
| 26 | 1.4.1.2 | Ballerkennung | 14d | 2021-06-10 | 2021-06-23 |  |  |  | 28d |  |  |  |  |  |
| 27 | 1.4.1.3 | Torerkennung | 14d | 2021-06-10 | 2021-06-23 |  |  |  | 28d |  |  |  |  |  |
| 28 | 1.4.1.4 | Linie abfahren | 10d | 2021-06-21 | 2021-06-30 | 25 |  |  | 21d |  |  |  |  |  |

| ID | WBS | Task | Duration | Start | Finish | Predecessors | Complete | Remaining | Total slack | Free slack | Constraint | Deadline | Resources | Work | Actual work |
| --- | --- | --- | --- | --- | --- | --- | --- | --- | --- | --- | --- | --- | --- | --- | --- |
| 29 | 1.4.2 | **3D-Modell** | 21d | 2021-06-10 | 2021-06-30 |  |  |  | 21d |  |  |  |  |  |  |
| 30 | 1.4.2.1 | Chassis Montage | 3d | 2021-06-10 | 2021-06-12 |  |  |  | 21d | 0d |  |  |  |  |  |
| 31 | 1.4.2.2 | Chassis Verbesserungen | 18d | 2021-06-13 | 2021-06-30 | 30 |  |  | 21d |  |  |  |  |  |  |
| 32 | 1.5 | **Sprint 3** | 21d | 2021-07-01 | 2021-07-21 |  |  |  | 0d |  |  |  |  |  |  |
| 33 | 1.5.1 | **Intelligenz** | 21d | 2021-07-01 | 2021-07-21 |  |  |  | 0d |  |  |  |  |  |  |
| 34 | 1.5.1.1 | Ballsuchalgorithmus | 21d | 2021-07-01 | 2021-07-21 |  |  |  | 0d |  | start no earlier than 2021-07-01 |  |  |  |  |
| 35 | 1.5.1.2 | Ballführung | 14d | 2021-07-01 | 2021-07-14 |  |  |  | 7d |  | start no earlier than 2021-07-01 |  |  |  |  |
| 36 | 1.5.1.3 | Hindernis umfahren | 14d | 2021-07-01 | 2021-07-14 |  |  |  | 0d |  | start no earlier than 2021-07-01 |  |  |  |  |
| 37 | 1.5.1.4 | niedrig-priorisierte Funktionen | 7d | 2021-07-15 | 2021-07-21 | 36 |  |  | 0d |  |  | 2021-07-21 |  |  |  |
| 38 | 1.6 | **Qualitätssicherung** | 63d | 2021-05-20 | 2021-07-21 |  |  |  | 0d |  |  |  |  |  |  |
| 39 | 1.6.1 | Testfälle Sprint 1 | 21d | 2021-05-20 | 2021-06-09 | 8FF |  |  | 42d |  |  |  |  |  |  |
| 40 | 1.6.2 | Testfälle Sprint 2 | 21d | 2021-06-10 | 2021-06-30 | 23FF |  |  | 21d |  |  |  |  |  |  |
| 41 | 1.6.3 | Testfälle Sprint 3 | 21d | 2021-07-01 | 2021-07-21 | 32FF |  |  | 0d |  |  |  |  |  |  |
| 42 | 2 | **Projektmanagement** | 84d | 2021-04-29 A | 2021-07-21 |  | 25% | 63d | 0d |  |  |  |  | 32h | 32h |
| 43 | 2.1 | Projektplan erstellen | 21d | 2021-04-29 A | 2021-05-19 A | 2 | 100% |  |  |  | finish no later than 2021-05-19 |  | Hien Anh Nguyen Manh | 32h | 32h |
| 44 | 2.2 | Projektplan & Sprintplanning Sprint 1 | 21d | 2021-05-20 | 2021-06-09 | 43 |  |  | 0d |  | finish no later than 2021-06-09 |  |  |  |  |
| 45 | 2.3 | Projektplan & Sprintplanning Sprint 2 | 21d | 2021-06-10 | 2021-06-30 | 44 |  |  | 0d |  | finish no later than 2021-06-30 |  |  |  |  |
| 46 | 2.4 | Projektplan & Sprintplanning Sprint 3 | 21d | 2021-07-01 | 2021-07-21 | 45 |  |  | 0d |  | finish no later than 2021-07-21 |  |  |  |  |
